# PTAM软件开发

Schedule from MS Project, 2017-10-20 to 2017-11-24.
Microsoft

## Calendars

- 标准: Mon-Fri 08:00-12:00, 13:00-17:00; Sat-Sun off.

## Resources

| Resource |
| --- |
| 高洪臣 |
| 高崇 |

## Schedule

| ID | WBS | Task | Duration | Start | Finish | Predecessors | Total slack | Resources | Work |
| --- | --- | --- | --- | --- | --- | --- | --- | --- | --- |
| 1 | 1 | **编码** | 20.5d | 2017-10-20 | 2017-11-17 |  | 0d |  | 304h |
| 2 | 1.1 | 工程搭建，库配置 | 0.5d | 2017-10-20 | 2017-10-20 |  | 0d | 高洪臣 | 4h |
| 3 | 1.2 | VideoSource类实现，OpenGL窗口显示图片流 | 0.5d | 2017-10-20 | 2017-10-23 | 2 | 0d | 高洪臣 | 4h |
| 4 | 1.3 | 搭建单元测试框架 | 0.5d | 2017-10-23 | 2017-10-23 | 3 | 0d | 高洪臣 | 4h |
| 5 | 1.4 | MapPoint类构建；KeyFrame类构建：FAST10角点检测，并OGL绘制；FAST非极大值抑制算法；构建4层金字塔；Shi-Tomasi分数计算算法； | 1.5d | 2017-10-23 | 2017-10-25 | 4 | 0d | 高洪臣; 高崇 | 24h |
| 6 | 1.5 | SSD算法；SSD块匹配算法；测试跟踪效果并gl显示； | 1d | 2017-10-25 | 2017-10-26 | 5 | 0d | 高洪臣; 高崇 | 16h |
| 7 | 1.6 | ATANCamera相机类构建：投影、反投影算法实现，投影导数计算算法 | 1d | 2017-10-26 | 2017-10-27 | 6 | 0d | 高洪臣; 高崇 | 16h |
| 8 | 1.7 | 单应性矩阵计算算法实现 | 1d | 2017-10-27 | 2017-10-30 | 7 | 0d | 高洪臣; 高崇 | 16h |
| 9 | 1.8 | 亚像素对齐之反向合成算法 | 1.5d | 2017-10-30 | 2017-10-31 | 8 | 0d | 高洪臣; 高崇 | 24h |
| 10 | 1.9 | 三角化计算三维点 | 0.5d | 2017-10-31 | 2017-11-01 | 9 | 0d | 高洪臣; 高崇 | 8h |
| 11 | 1.10 | BundleAdjustment | 3d | 2017-11-01 | 2017-11-06 | 10 | 0d | 高洪臣; 高崇 | 48h |
| 12 | 1.11 | 极线搜索 | 2d | 2017-11-06 | 2017-11-08 | 11 | 0d | 高洪臣; 高崇 | 32h |
| 13 | 1.12 | 主导面及se3计算，RANSAC，施密特正交化分解 | 1d | 2017-11-08 | 2017-11-09 | 12 | 0d | 高洪臣; 高崇 | 16h |
| 14 | 1.13 | gl实现三维点及主导平面显示 | 0.5d | 2017-11-09 | 2017-11-09 | 13 | 0d | 高洪臣 | 4h |
| 15 | 1.14 | SmallBlurryImage类构建，运动预测，ESM-tracking方法计算SE2，se2转se3 | 2d | 2017-11-09 | 2017-11-13 | 14 | 0d | 高洪臣; 高崇 | 32h |
| 16 | 1.15 | TrackMap：粗跟踪，精细跟踪，高斯牛顿优化 | 3d | 2017-11-13 | 2017-11-16 | 15 | 0d | 高洪臣; 高崇 | 48h |
| 17 | 1.16 | MapMaker线程实现并测试 | 1d | 2017-11-16 | 2017-11-17 | 16 | 0d | 高洪臣 | 8h |
| 18 | 2 | **测试** | 2d | 2017-11-17 | 2017-11-21 |  | 0d |  | 16h |
| 19 | 2.1 | 系统调试及优化 | 2d | 2017-11-17 | 2017-11-21 | 17 | 0d | 高洪臣 | 16h |
| 20 | 3 | **软件移植** | 3d | 2017-11-21 | 2017-11-24 |  | 0d |  | 24h |
| 21 | 3.1 | 移植到Android平台 | 3d | 2017-11-21 | 2017-11-24 | 19 | 0d | 高洪臣 | 24h |
